# Диаграмма ганта

Schedule from MS Project, 2020-01-16 to 2020-06-03, costs in ₽, A marks actual dates.

## Calendars

- Стандартный: Mon-Fri 09:00-13:00, 14:00-18:00; Sat-Sun off.

## Resources

| Resource | Unit | Rate | Cost per use |
| --- | --- | --- | --- |
| Руководитель проекта |  | 500 |  |
| Тестировщик |  | 250 |  |
| Программист |  | 400 |  |
| Помощник руководителя проекта |  | 500 |  |
| Проектировщик БД |  | 400 |  |
| Бизнес аналитик |  | 600 |  |
| Серверы | 2 | 5000 | 50000 |
| Ноутбуки | 7 | 1200 | 10000 |
| Рабочие места | 6 | 5000 | 5000 |
| Сетевое оборудование | 3 | 12000 | 12000 |

## Schedule

| ID | WBS | Task | Type | Duration | Start | Finish | Predecessors | Complete | Remaining | Baseline start | Baseline finish | Baseline duration | Total slack | Resources | Work | Actual work | Cost | Baseline cost | Actual cost |
| --- | --- | --- | --- | --- | --- | --- | --- | --- | --- | --- | --- | --- | --- | --- | --- | --- | --- | --- | --- |
| 1 | 1 | Начало проекта | manual | 1d | 2020-01-16 A | 2020-01-16 A |  | 100% |  | 2020-01-16 | 2020-01-16 | 1d |  | Помощник руководителя проекта | 8h | 8h | 4,000 | 4,000 | 4,000 |
| 2 | 2 | Формирование команды | manual | 3d | 2020-01-17 A | 2020-01-21 A | 1 | 100% |  | 2020-01-17 | 2020-01-20 | 2d |  | Помощник руководителя проекта | 24h | 24h | 12,000 | 8,000 | 12,000 |
| 3 | 3 | **Проведение структурного анализа** |  | 51d | 2020-01-23 A | 2020-04-02 | 2 | 26% | 37.89d | 2020-01-23 | 2020-04-02 | 51d | 0d |  | 560h | 144h | 275,200 | 252,000 | 67,200 |
| 4 | 3.1 | Разработка функциональной модели | manual | 35d | 2020-01-23 A | 2020-03-11 |  | 34% | 23d | 2020-01-23 | 2020-03-11 | 35d |  | Руководитель проекта; Помощник руководителя проекта | 280h | 96h | 140,000 | 140,000 | 48,000 |
| 5 | 3.2 | Разработка высокоуровневой модели | manual | 35d | 2020-02-14 A | 2020-04-02 |  | 17% | 29d | 2020-02-14 | 2020-04-02 | 35d |  | Программист; Руководитель проекта | 280h | 48h | 135,200 | 112,000 | 19,200 |
| 6 | 4 | Проведение анализа и проектирование | manual | 40d | 2020-02-13 A | 2020-04-08 |  | 5% | 38d | 2020-02-13 | 2020-04-08 | 40d |  | Тестировщик; Бизнес аналитик | 320h | 16h | 186,400 | 80,000 | 4,000 |
| 7 | 5 | Реализация проекта | manual | 9.5d | 2020-03-26 | 2020-04-08 |  |  |  | 2020-04-06 | 2020-04-17 | 9.5d |  | Программист | 76h |  | 30,400 | 30,400 |  |
| 8 | 6 | Тестирование проекта | manual | 12d | 2020-04-09 | 2020-04-24 |  |  |  | 2020-04-09 | 2020-04-22 | 10d |  | Программист | 96h |  | 38,400 | 20,000 |  |
| 9 | 7 | Развертывание и внедрение | manual | 11d | 2020-04-10 A | 2020-04-24 |  |  | 11d | 2020-04-10 | 2020-04-23 | 9.5d |  | Помощник руководителя проекта; Проектировщик БД | 88h |  | 35,200 | 38,000 |  |
| 10 | 8 | Завершение проекта | manual | 15.5d | 2020-05-13 | 2020-06-03 | 9 |  |  | 2020-04-23 | 2020-05-14 | 15.5d |  | Проектировщик БД | 124h |  | 49,600 | 62,000 |  |
| 11 | 9 | Сдача проекта | milestone, manual | 0d | 2020-06-03 | 2020-06-03 | 10 |  |  | 2020-05-15 | 2020-05-15 |  |  |  |  |  |  |  |  |

Notes:
- 1: Название ресурса: Куратор со стороны Заказчика;Куратор со стороны Исполнителя
- 2: Название ресурса: Куратор со стороны Заказчика
- 4: Название ресурса: Планшеты;Рабочие места;Руководитель проекта со стороны Исполнителя
- 5: Название ресурса: Планшеты;Рабочие места;Руководитель проекта со стороны Исполнителя;Консультант;Бизнес-аналитик
- 6: Название ресурса: Бизнес-аналитик;Проектировщик БД;Куратор со стороны Исполнителя
- 7: Название ресурса: Проектировщик БД;Программист;Серверы
- 8: Название ресурса: Программист;Тестировщиик;Серверы
- 9: Название ресурса: Проектировщик БД;Программист;Тестировщиик;Куратор со стороны Исполнителя;Серверы;Рабочие места;Сетевое оборудование
- 10: Название ресурса: Руководитель проекта со стороны Исполнителя;Консультант;Руководитель проекта со стороны Заказчика;Бизнес-аналитик
